# Virtualni popotnik

How a schedule from MS Project changed from version to version. A marks actual dates.

## Version 1 (saved 2015-03-16)

Note of the change: mali mehek project

| ID | WBS | Task | Duration | Start | Finish | Total float |
| --- | --- | --- | --- | --- | --- | --- |
| 1 |  | Začetni sestanek s stranko | 2h | 2015-03-16 | 2015-03-16 | 0.75d |
| 2 |  | Interni sestanek | 1d? | 2015-03-16 | 2015-03-16 |  |
| 3 |  | Priprava pogodbe | 1d? | 2015-03-16 | 2015-03-16 |  |
| 4 |  | Podpis pogodbe | 1h | 2015-03-16 | 2015-03-16 | 0.88d |
| 5 | 5 | **Priprava zahtev** | 1d? | 2015-03-16 | 2015-03-16 | 0d |
| 6 |  | Zajem zahtev | 1d? | 2015-03-16 | 2015-03-16 |  |
| 7 |  | Analiza zahtev | 1d? | 2015-03-16 | 2015-03-16 |  |
| 8 |  | Izdelava specifikacij | 1d? | 2015-03-16 | 2015-03-16 |  |
| 9 |  | Sestanek s stranko, usklajevanje specifikacij | 1d? | 2015-03-16 | 2015-03-16 |  |
| 10 |  | Potrditev zahtev | 1d? | 2015-03-16 | 2015-03-16 |  |
| 11 | 6 | **Priprava delovnega okolja** | 1d? | 2015-03-16 | 2015-03-16 | 0d |
| 12 |  | Namestitev strežnika | 1d? | 2015-03-16 | 2015-03-16 |  |
| 13 |  | Priprava "delavnice" za brezpilotna zračna plovila | 1d? | 2015-03-16 | 2015-03-16 |  |
| 14 |  | Namestitev delovnih postaj | 1d? | 2015-03-16 | 2015-03-16 |  |
| 15 | 7 | **Razvoj** | 1d? | 2015-03-16 | 2015-03-16 | 0d |
| 16 |  | Spletna aplikacija | 1d? | 2015-03-16 | 2015-03-16 |  |
| 17 |  | Inteligentni sistem | 1d? | 2015-03-16 | 2015-03-16 |  |
| 18 |  | Modifikacija brezpilotna zračna plovila | 1d? | 2015-03-16 | 2015-03-16 |  |
| 19 |  | Mobilna aplikacija | 1d? | 2015-03-16 | 2015-03-16 |  |
| 20 | 8 | **Testiranje** | 1d? | 2015-03-16 | 2015-03-16 | 0d |
| 21 | 8.1 | **Spletna aplikacija** | 1d? | 2015-03-16 | 2015-03-16 | 0d |
| 22 |  | Priprava načrta | 1d? | 2015-03-16 | 2015-03-16 |  |
| 23 |  | Priprava testnih primerov | 1d? | 2015-03-16 | 2015-03-16 |  |
| 24 |  | Testiranje | 1d? | 2015-03-16 | 2015-03-16 |  |
| 25 |  | Poročilo | 1d? | 2015-03-16 | 2015-03-16 |  |
| 26 | 8.2 | **Inteligentni sistem** | 1d? | 2015-03-16 | 2015-03-16 | 0d |
| 27 |  | Priprava načrta | 1d? | 2015-03-16 | 2015-03-16 |  |
| 28 |  | Priprava testnih primerov | 1d? | 2015-03-16 | 2015-03-16 |  |
| 29 |  | Testiranje | 1d? | 2015-03-16 | 2015-03-16 |  |
| 30 |  | Poročilo | 1d? | 2015-03-16 | 2015-03-16 |  |
| 31 | 8.3 | **Modifikacija brezpilotna zračna plovila** | 1d? | 2015-03-16 | 2015-03-16 | 0d |
| 32 |  | Priprava načrta | 1d? | 2015-03-16 | 2015-03-16 |  |
| 33 |  | Priprava testnih primerov | 1d? | 2015-03-16 | 2015-03-16 |  |
| 34 |  | Testiranje | 1d? | 2015-03-16 | 2015-03-16 |  |
| 35 |  | Poročilo | 1d? | 2015-03-16 | 2015-03-16 |  |
| 36 | 8.4 | **Mobilna aplikacija** | 1d? | 2015-03-16 | 2015-03-16 | 0d |
| 37 |  | Priprava načrta | 1d? | 2015-03-16 | 2015-03-16 |  |
| 38 |  | Priprava testnih primerov | 1d? | 2015-03-16 | 2015-03-16 |  |
| 39 |  | Testiranje | 1d? | 2015-03-16 | 2015-03-16 |  |
| 40 |  | Poročilo | 1d? | 2015-03-16 | 2015-03-16 |  |
| 41 |  | Izobraževanje | 1d? | 2015-03-16 | 2015-03-16 |  |
| 42 |  | Implementacija | 1d? | 2015-03-16 | 2015-03-16 |  |

## Version 2 (saved 2015-03-23)

Note of the change: verzija iz vaj 23.03.2015

Last finish stays 2015-03-16.

Added:

| ID | Task | Duration | Start | Finish | Constraint |
| --- | --- | --- | --- | --- | --- |
| 11 | **Analiza nabavnega materiala** | 1d? | 2015-03-16 | 2015-03-16 |  |
| 12 | Pridobivanje ponudb za senzorje in kamere | 1d? | 2015-03-16 | 2015-03-16 |  |
| 13 | Nabava testnega materiala | 1d? | 2015-03-16 | 2015-03-16 |  |
| 14 | Preizkušanje testnega materiala | 1d? | 2015-03-16 | 2015-03-16 |  |
| 15 | Dokumentiranje preizkušanja testnega materiala | 1d? | 2015-03-16 | 2015-03-16 |  |
| 18 | Konfiguracija strežnika | 1d? | 2015-03-16 | 2015-03-16 |  |
| 19 | Vzpostavitev RAID 6 diskovnega polja | 1d? | 2015-03-16 | 2015-03-16 |  |
| 22 | Priprava poročila o pripravi delovnega okolja | 1d? | 2015-03-16 | 2015-03-16 |  |
| 23 | **Vzpostavitev redudančnega delovnega okolja** | 1d? | 2015-03-16 | 2015-03-16 |  |
| 24 | Analiza zahtev redundančnega delovnega okolja | 1d? | 2015-03-16 | 2015-03-16 |  |
| 25 | Implementacija redundančnega delovnega okolja | 1d? | 2015-03-16 | 2015-03-16 |  |
| 26 | Priprava poročila | 1d? | 2015-03-16 | 2015-03-16 |  |
| 27 | **Vzpostavitev podatkovne baze** | 1d? | 2015-03-16 | 2015-03-16 |  |
| 28 | Analiza zahtev | 1d? | 2015-03-16 | 2015-03-16 |  |
| 29 | Izdelava ER diagrama | 1d? | 2015-03-16 | 2015-03-16 |  |
| 30 | Modeliranje podatkovne baze | 1d? | 2015-03-16 | 2015-03-16 |  |
| 31 | Vzpostavitev podatkovnega strežnika | 1d? | 2015-03-16 | 2015-03-16 |  |
| 32 | Implementacija podatkovne baze | 1d? | 2015-03-16 | 2015-03-16 |  |
| 33 | Priprava politike arhiviranja in obnovitve podatkovne baze | 1d? | 2015-03-16 | 2015-03-16 |  |
| 34 | Priprava poročila | 1d? | 2015-03-16 | 2015-03-16 |  |
| 36 | **Sestanek delovne skupine** | 0.25d | 2015-03-16 | 2015-03-16 |  |
| 37 | Sestanek delovne skupine | 2h | 2015-03-16 | 2015-03-16 | start no earlier than 2015-03-16 |
| 39 | Načrtovanje inteligentnega sistema | 1d? | 2015-03-16 | 2015-03-16 |  |
| 40 | Implementacija podatkovne baze | 1d? | 2015-03-16 | 2015-03-16 |  |
| 41 | Razvoj storitev za dostop in vnos podatkov | 1d? | 2015-03-16 | 2015-03-16 |  |
| 42 | Implementacija storitev za zajem podatkov (vreme) | 1d? | 2015-03-16 | 2015-03-16 |  |
| 43 | Razvoj mehanizmov za varovanje podatkov | 1d? | 2015-03-16 | 2015-03-16 |  |
| 44 | Razvoj nadzora brezpilotnih zračnih plovil | 1d? | 2015-03-16 | 2015-03-16 |  |
| 45 | Priprava dokumentacije | 1d? | 2015-03-16 | 2015-03-16 |  |
| 46 | Predstavitev rezultatov iteracije naročniku | 1d? | 2015-03-16 | 2015-03-16 |  |
| 47 | Ponovna iteracija implementacije | 1d? | 2015-03-16 | 2015-03-16 |  |
| 49 | Načrtovanje modifikacije brezpilotnega zračnega plovila | 1d? | 2015-03-16 | 2015-03-16 |  |
| 50 | Priprava senzorjev in kamere | 1d? | 2015-03-16 | 2015-03-16 |  |
| 51 | Povezava senzorjev in kamere z inteligentnim sistemom | 1d? | 2015-03-16 | 2015-03-16 |  |
| 52 | Implementacija modifikacij | 1d? | 2015-03-16 | 2015-03-16 |  |
| 53 | Razvoj samodejnega upravljanja letenja | 1d? | 2015-03-16 | 2015-03-16 |  |
| 54 | Priprava dokumentacije | 1d? | 2015-03-16 | 2015-03-16 |  |
| 55 | Predstavitev rezultatov iteracije naročniku | 1d? | 2015-03-16 | 2015-03-16 |  |
| 56 | Ponovna iteracija implementacije | 1d? | 2015-03-16 | 2015-03-16 |  |
| 58 | Načrtovanje spletne aplikacije | 1d? | 2015-03-16 | 2015-03-16 |  |
| 59 | Izdelava grafične predloge | 1d? | 2015-03-16 | 2015-03-16 |  |
| 60 | Implementacija sprehoda v virtualni realnosti | 1d? | 2015-03-16 | 2015-03-16 |  |
| 61 | Implementacija sprehoda v načinu 360° panorame | 1d? | 2015-03-16 | 2015-03-16 |  |
| 62 | Priprava dokumentacije | 1d? | 2015-03-16 | 2015-03-16 |  |
| 63 | Predstavitev rezultatov iteracije naročniku | 1d? | 2015-03-16 | 2015-03-16 |  |
| 64 | Ponovna iteracija implementacije | 1d? | 2015-03-16 | 2015-03-16 |  |
| 66 | Načrtovanje mobilne aplikacije | 1d? | 2015-03-16 | 2015-03-16 |  |
| 67 | Izdelava grafičnega vmesnika | 1d? | 2015-03-16 | 2015-03-16 |  |
| 68 | Modeliranje podatkovne baze | 1d? | 2015-03-16 | 2015-03-16 |  |
| 69 | Vzpostavitev lokalne podatkovne baze | 1d? | 2015-03-16 | 2015-03-16 |  |
| 70 | Implementacija sprehoda v načinu 360° panorame | 1d? | 2015-03-16 | 2015-03-16 |  |
| 71 | Implementacija sprehoda v virtualni realnosti | 1d? | 2015-03-16 | 2015-03-16 |  |
| 72 | Implementacija vnosa podatkov | 1d? | 2015-03-16 | 2015-03-16 |  |
| 73 | Priprava dokumentacije | 1d? | 2015-03-16 | 2015-03-16 |  |
| 74 | Predstavitev rezultatov iteracije naročniku | 1d? | 2015-03-16 | 2015-03-16 |  |
| 75 | Ponovna iteracija implementacije | 1d? | 2015-03-16 | 2015-03-16 |  |
| 82 | Priprava dokumentacije | 1d? | 2015-03-16 | 2015-03-16 |  |
| 83 | Ponovna iteracija implementacije | 1d? | 2015-03-16 | 2015-03-16 |  |
| 89 | Priprava dokumentacije | 1d? | 2015-03-16 | 2015-03-16 |  |
| 90 | Ponovna iteracija implementacije | 1d? | 2015-03-16 | 2015-03-16 |  |
| 96 | Priprava dokumentacije | 1d? | 2015-03-16 | 2015-03-16 |  |
| 97 | Ponovna iteracija implementacije | 1d? | 2015-03-16 | 2015-03-16 |  |
| 103 | Priprava dokumentacije | 1d? | 2015-03-16 | 2015-03-16 |  |
| 104 | Ponovna iteracija implementacije | 1d? | 2015-03-16 | 2015-03-16 |  |
| 105 | Priprava navodil za uporabo | 1d? | 2015-03-16 | 2015-03-16 |  |

Changed:

| ID | Task | Other |
| --- | --- | --- |
| 107 | Namestitev pri naročniku | was named Implementacija |

## Version 3 (saved 2015-03-30)

Note of the change: popravek diagram aktivnosti

Last finish stays 2015-03-16.

Added:

| ID | Task | Duration | Start | Finish |
| --- | --- | --- | --- | --- |
| 107 | **Zaključek projekta** | 1d? | 2015-03-16 | 2015-03-16 |
| 109 | Pogostitev izvajalcev | 1d? | 2015-03-16 | 2015-03-16 |

## Version 4 (saved 2015-04-13)

Note of the change: začetek timelina

Last finish 2015-03-16 → 2015-04-06 (+21d).

Added:

| ID | Task | Duration | Start | Finish | Predecessors | Resources |
| --- | --- | --- | --- | --- | --- | --- |
| 14 | Prevzem materiala | 1h | 2015-04-01 | 2015-04-01 | 13 | Tajnica |
| 17 | Nabava materiala | 1h | 2015-04-06 | 2015-04-06 | 16 |  |
| 62 | Implementacije grafičnega vmesnika | 1d? | 2015-03-30 | 2015-03-31 |  |  |
| 73 | Implementacija grafične vmesnika | 1d? | 2015-03-30 | 2015-03-31 |  |  |
| 110 | Priprava navodil za uporabo spletne aplikacije | 1d? | 2015-03-31 | 2015-04-01 |  |  |
| 111 | Priprava navodil za uporabo mobilne aplikacije | 1d? | 2015-03-31 | 2015-04-01 |  |  |
| 112 | Priprava navodil za uporabo brezpilotnih zračnih plovil | 1d? | 2015-03-31 | 2015-04-01 |  |  |
| 113 | Priprava navodila za vzdrževaje brezpilotnih zračnih plovil | 1d? | 2015-03-31 | 2015-04-01 |  |  |
| 114 | Priprava navil za vzdrževanje intelegentnega sistema | 1d? | 2015-03-31 | 2015-04-01 |  |  |
| 116 | Izboraževanje upravljanje intelegentnega sistema | 1d? | 2015-04-01 | 2015-04-02 |  |  |
| 117 | Izobraževanje uporabe in vzdrževanja brezpilotnih zračnih polovil | 1d? | 2015-04-01 | 2015-04-02 |  |  |
| 118 | Izobraževanje uporabe mobilne aplikacije | 1d? | 2015-04-01 | 2015-04-02 |  |  |
| 119 | Izobraževanje uporabe spletne aplikacije | 1d? | 2015-04-01 | 2015-04-02 |  |  |
| 122 | Priprava načrta namestitve | 1d? | 2015-04-02 | 2015-04-03 |  |  |
| 123 | Priprava in namestitev strežniških sistemov | 1d? | 2015-04-02 | 2015-04-03 |  |  |
| 124 | Namestitev podatkovne baze | 1d? | 2015-04-02 | 2015-04-03 |  |  |
| 125 | Vnos podatkov v podatkovno bazo | 1d? | 2015-04-02 | 2015-04-03 |  |  |
| 126 | Namestitev intelegentega sistema | 1d? | 2015-04-02 | 2015-04-03 |  |  |
| 127 | Preizkus delovanja intelegentnega sistema | 1d? | 2015-04-02 | 2015-04-03 |  |  |
| 128 | Namestitev mobilne aplikacije | 1d? | 2015-04-02 | 2015-04-03 |  |  |
| 129 | Namestitev spletne aplikacije | 1d? | 2015-04-02 | 2015-04-03 |  |  |
| 130 | Preizkus delovanja spletne in mobilne aplikacije | 1d? | 2015-04-02 | 2015-04-03 |  |  |
| 131 | Namestitev brezpilotnih zračnih plovil | 1d? | 2015-04-02 | 2015-04-03 |  |  |
| 132 | Preizkus delovanja brezpilotnih zračnih plovil | 1d? | 2015-04-02 | 2015-04-03 |  |  |

Changed:

| ID | Task | Start | Finish | Duration | Total float | Predecessors | Other |
| --- | --- | --- | --- | --- | --- | --- | --- |
| 1 | Začetni sestanek s stranko |  |  | 2h → 4h | 0.75d → 0d |  |  |
| 2 | Interni sestanek |  |  | 1d? → 3h | none → 0d | none → 1 | resources none → Tajnica; Vodja delovne skupine - mobilna a.; Vodja delovne skupine - spletna a.; Vodja delovne skupine - intelegentni s.; Vodja delovne skupine - BZP; Vodja projekta |
| 3 | Priprava pogodbe |  | 2015-03-16 → 2015-03-17 (+1d) | 1d? → 5h | none → 0d | none → 2 | resources none → Pravnik; Vodja projekta |
| 4 | Podpis pogodbe | 2015-03-16 → 2015-03-17 (+1d) | 2015-03-16 → 2015-03-17 (+1d) | 1h → 2h | 0.88d → 0d | none → 3 | resources Vodja projekta → Pravnik; Vodja projekta |
| 5 | **Priprava zahtev** | 2015-03-16 → 2015-03-17 (+1d) | 2015-03-16 → 2015-03-26 (+10d) | 1d? → 6.75d |  | none → 4 |  |
| 6 | Zajem zahtev | 2015-03-16 → 2015-03-17 (+1d) | 2015-03-16 → 2015-03-19 (+3d) | 1d? → 12h | none → 0d |  | resources none → Načrtovalec 1; Načrtovalec 2; Načrtovalec 3; Načrtovalec sistema; Vodja delovne skupine - mobilna a.; Vodja delovne skupine - spletna a.; Vodja delovne skupine - intelegentni s.; Vodja delovne skupine - BZP |
| 7 | Analiza zahtev | 2015-03-16 → 2015-03-19 (+3d) | 2015-03-16 → 2015-03-20 (+4d) | 1d? → 1d | none → 0d | none → 6 | resources none → Načrtovalec 1; Načrtovalec 2; Načrtovalec 3; Načrtovalec sistema; Vodja projekta; Vodja delovne skupine - mobilna a.; Vodja delovne skupine - spletna a.; Vodja delovne skupine - intelegentni s.; Vodja delovne skupine - BZP |
| 8 | Izdelava specifikacij | 2015-03-16 → 2015-03-20 (+4d) | 2015-03-16 → 2015-03-25 (+9d) | 1d? → 3d | none → 0d | none → 7 | resources none → Načrtovalec 1; Načrtovalec 2; Načrtovalec 3; Načrtovalec sistema; Vodja delovne skupine - mobilna a.; Vodja delovne skupine - spletna a.; Vodja delovne skupine - intelegentni s.; Vodja delovne skupine - BZP; Vodja projekta |
| 9 | Sestanek s stranko, usklajevanje specifikacij | 2015-03-16 → 2015-03-25 (+9d) | 2015-03-16 → 2015-03-26 (+10d) | 1d? → 1d | none → 0d | none → 8 | resources none → Tajnica; Vodja delovne skupine - mobilna a.; Vodja delovne skupine - spletna a.; Vodja delovne skupine - intelegentni s.; Vodja delovne skupine - BZP; Vodja projekta |
| 10 | Potrditev zahtev | 2015-03-16 → 2015-03-26 (+10d) | 2015-03-16 → 2015-03-26 (+10d) | 1d? → 2h | none → 0d | none → 9 | resources none → Vodja delovne skupine - mobilna a.; Vodja delovne skupine - spletna a.; Vodja delovne skupine - intelegentni s.; Vodja delovne skupine - BZP; Vodja projekta |
| 11 | **Analiza nabavnega materiala** | 2015-03-16 → 2015-03-26 (+10d) | 2015-03-16 → 2015-04-06 (+21d) | 1d? → 6.75d |  | none → 5 |  |
| 12 | Pridobivanje ponudb za senzorje in kamere | 2015-03-16 → 2015-03-26 (+10d) | 2015-03-16 → 2015-04-01 (+16d) | 1d? → 4d | none → 0d |  | resources none → Vodja delovne skupine - BZP |
| 13 | Nabava testnega materiala | 2015-03-16 → 2015-04-01 (+16d) | 2015-03-16 → 2015-04-01 (+16d) | 1d? → 1h | none → 0d | none → 12 | resources none → Vodja delovne skupine - BZP; 360° kamera [400%]; Brezpilotno zračno plovilo [300%]; Daljinski upravljalnik [300%]; Tehnični material [200%] |
| 15 | Preizkušanje testnega materiala | 2015-03-16 → 2015-04-01 (+16d) | 2015-03-16 → 2015-04-03 (+18d) | 1d? → 2d | none → 0d | none → 14 |  |
| 16 | Dokumentiranje preizkušanja testnega materiala | 2015-03-16 → 2015-04-03 (+18d) | 2015-03-16 → 2015-04-06 (+21d) | 1d? → 3h | none → 0d | none → 15 |  |
| 18 | **Priprava delovnega okolja** | 2015-03-16 → 2015-03-26 (+10d) | 2015-03-16 → 2015-03-27 (+11d) |  |  | none → 5 |  |
| 19 | Namestitev strežnika | 2015-03-16 → 2015-03-26 (+10d) | 2015-03-16 → 2015-03-27 (+11d) |  | none → 0d |  |  |
| 20 | Konfiguracija strežnika | 2015-03-16 → 2015-03-26 (+10d) | 2015-03-16 → 2015-03-27 (+11d) |  | none → 0d |  |  |
| 21 | Vzpostavitev RAID 6 diskovnega polja | 2015-03-16 → 2015-03-26 (+10d) | 2015-03-16 → 2015-03-27 (+11d) |  | none → 0d |  |  |
| 22 | Priprava "delavnice" za brezpilotna zračna plovila | 2015-03-16 → 2015-03-26 (+10d) | 2015-03-16 → 2015-03-27 (+11d) |  | none → 0d |  |  |
| 23 | Namestitev delovnih postaj | 2015-03-16 → 2015-03-26 (+10d) | 2015-03-16 → 2015-03-27 (+11d) |  | none → 0d |  |  |
| 24 | Priprava poročila o pripravi delovnega okolja | 2015-03-16 → 2015-03-26 (+10d) | 2015-03-16 → 2015-03-27 (+11d) |  | none → 0d |  |  |
| 25 | **Vzpostavitev redudančnega delovnega okolja** | 2015-03-16 → 2015-03-26 (+10d) | 2015-03-16 → 2015-03-27 (+11d) |  |  | none → 5 |  |
| 26 | Analiza zahtev redundančnega delovnega okolja | 2015-03-16 → 2015-03-26 (+10d) | 2015-03-16 → 2015-03-27 (+11d) |  | none → 0d |  |  |
| 27 | Implementacija redundančnega delovnega okolja | 2015-03-16 → 2015-03-26 (+10d) | 2015-03-16 → 2015-03-27 (+11d) |  | none → 0d |  |  |
| 28 | Priprava poročila | 2015-03-16 → 2015-03-26 (+10d) | 2015-03-16 → 2015-03-27 (+11d) |  | none → 0d |  |  |
| 29 | **Vzpostavitev podatkovne baze** | 2015-03-16 → 2015-03-27 (+11d) | 2015-03-16 → 2015-03-30 (+14d) |  |  | none → 25, 18 |  |
| 30 | Analiza zahtev | 2015-03-16 → 2015-03-27 (+11d) | 2015-03-16 → 2015-03-30 (+14d) |  | none → 0d |  |  |
| 31 | Izdelava ER diagrama | 2015-03-16 → 2015-03-27 (+11d) | 2015-03-16 → 2015-03-30 (+14d) |  | none → 0d |  |  |
| 32 | Modeliranje podatkovne baze | 2015-03-16 → 2015-03-27 (+11d) | 2015-03-16 → 2015-03-30 (+14d) |  | none → 0d |  |  |
| 33 | Vzpostavitev podatkovnega strežnika | 2015-03-16 → 2015-03-27 (+11d) | 2015-03-16 → 2015-03-30 (+14d) |  | none → 0d |  |  |
| 34 | Implementacija podatkovne baze | 2015-03-16 → 2015-03-27 (+11d) | 2015-03-16 → 2015-03-30 (+14d) |  | none → 0d |  |  |
| 35 | Priprava politike arhiviranja in obnovitve podatkovne baze | 2015-03-16 → 2015-03-27 (+11d) | 2015-03-16 → 2015-03-30 (+14d) |  | none → 0d |  |  |
| 36 | Priprava poročila | 2015-03-16 → 2015-03-27 (+11d) | 2015-03-16 → 2015-03-30 (+14d) |  | none → 0d |  |  |
| 37 | **Razvoj** | 2015-03-16 → 2015-03-30 (+14d) | 2015-03-16 → 2015-03-31 (+15d) |  |  | none → 29 |  |
| 38 | **Sestanek delovne skupine** | 2015-03-16 → 2015-03-30 (+14d) | 2015-03-16 → 2015-03-30 (+14d) |  | 0d → 0.75d |  |  |
| 39 | Sestanek delovne skupine | 2015-03-16 → 2015-03-30 (+14d) | 2015-03-16 → 2015-03-30 (+14d) |  | none → 0.75d |  |  |
| 40 | **Inteligentni sistem** | 2015-03-16 → 2015-03-30 (+14d) | 2015-03-16 → 2015-03-31 (+15d) |  |  |  |  |
| 41 | Načrtovanje inteligentnega sistema | 2015-03-16 → 2015-03-30 (+14d) | 2015-03-16 → 2015-03-31 (+15d) |  | none → 0d |  |  |
| 42 | Implementacija podatkovne baze | 2015-03-16 → 2015-03-30 (+14d) | 2015-03-16 → 2015-03-31 (+15d) |  | none → 0d |  |  |
| 43 | Razvoj storitev za dostop in vnos podatkov | 2015-03-16 → 2015-03-30 (+14d) | 2015-03-16 → 2015-03-31 (+15d) |  | none → 0d |  |  |
| 44 | Implementacija storitev za zajem podatkov (vreme) | 2015-03-16 → 2015-03-30 (+14d) | 2015-03-16 → 2015-03-31 (+15d) |  | none → 0d |  |  |
| 45 | Razvoj mehanizmov za varovanje podatkov | 2015-03-16 → 2015-03-30 (+14d) | 2015-03-16 → 2015-03-31 (+15d) |  | none → 0d |  |  |
| 46 | Razvoj nadzora brezpilotnih zračnih plovil | 2015-03-16 → 2015-03-30 (+14d) | 2015-03-16 → 2015-03-31 (+15d) |  | none → 0d |  |  |
| 47 | Priprava dokumentacije | 2015-03-16 → 2015-03-30 (+14d) | 2015-03-16 → 2015-03-31 (+15d) |  | none → 0d |  |  |
| 48 | Predstavitev rezultatov iteracije naročniku | 2015-03-16 → 2015-03-30 (+14d) | 2015-03-16 → 2015-03-31 (+15d) |  | none → 0d |  |  |
| 49 | Ponovna iteracija implementacije | 2015-03-16 → 2015-03-30 (+14d) | 2015-03-16 → 2015-03-31 (+15d) |  | none → 0d |  |  |
| 50 | **Modifikacija brezpilotna zračna plovila** | 2015-03-16 → 2015-03-30 (+14d) | 2015-03-16 → 2015-03-31 (+15d) |  |  |  |  |
| 51 | Načrtovanje modifikacije brezpilotnega zračnega plovila | 2015-03-16 → 2015-03-30 (+14d) | 2015-03-16 → 2015-03-31 (+15d) |  | none → 0d |  |  |
| 52 | Priprava senzorjev in kamere | 2015-03-16 → 2015-03-30 (+14d) | 2015-03-16 → 2015-03-31 (+15d) |  | none → 0d |  |  |
| 53 | Povezava senzorjev in kamere z inteligentnim sistemom | 2015-03-16 → 2015-03-30 (+14d) | 2015-03-16 → 2015-03-31 (+15d) |  | none → 0d |  |  |
| 54 | Implementacija modifikacij | 2015-03-16 → 2015-03-30 (+14d) | 2015-03-16 → 2015-03-31 (+15d) |  | none → 0d |  |  |
| 55 | Razvoj samodejnega upravljanja letenja | 2015-03-16 → 2015-03-30 (+14d) | 2015-03-16 → 2015-03-31 (+15d) |  | none → 0d |  |  |
| 56 | Priprava dokumentacije | 2015-03-16 → 2015-03-30 (+14d) | 2015-03-16 → 2015-03-31 (+15d) |  | none → 0d |  |  |
| 57 | Predstavitev rezultatov iteracije naročniku | 2015-03-16 → 2015-03-30 (+14d) | 2015-03-16 → 2015-03-31 (+15d) |  | none → 0d |  |  |
| 58 | Ponovna iteracija implementacije | 2015-03-16 → 2015-03-30 (+14d) | 2015-03-16 → 2015-03-31 (+15d) |  | none → 0d |  |  |
| 59 | **Spletna aplikacija** | 2015-03-16 → 2015-03-30 (+14d) | 2015-03-16 → 2015-03-31 (+15d) |  |  |  |  |
| 60 | Načrtovanje spletne aplikacije | 2015-03-16 → 2015-03-30 (+14d) | 2015-03-16 → 2015-03-31 (+15d) |  | none → 0d |  |  |
| 61 | Izdelava grafične predloge | 2015-03-16 → 2015-03-30 (+14d) | 2015-03-16 → 2015-03-31 (+15d) |  | none → 0d |  |  |
| 63 | Implementacija sprehoda v virtualni realnosti | 2015-03-16 → 2015-03-30 (+14d) | 2015-03-16 → 2015-03-31 (+15d) |  | none → 0d |  |  |
| 64 | Implementacija sprehoda v načinu 360° panorame | 2015-03-16 → 2015-03-30 (+14d) | 2015-03-16 → 2015-03-31 (+15d) |  | none → 0d |  |  |
| 65 | Priprava dokumentacije | 2015-03-16 → 2015-03-30 (+14d) | 2015-03-16 → 2015-03-31 (+15d) |  | none → 0d |  |  |
| 66 | Predstavitev rezultatov iteracije naročniku | 2015-03-16 → 2015-03-30 (+14d) | 2015-03-16 → 2015-03-31 (+15d) |  | none → 0d |  |  |
| 67 | Ponovna iteracija implementacije | 2015-03-16 → 2015-03-30 (+14d) | 2015-03-16 → 2015-03-31 (+15d) |  | none → 0d |  |  |
| 68 | **Mobilna aplikacija** | 2015-03-16 → 2015-03-30 (+14d) | 2015-03-16 → 2015-03-31 (+15d) |  |  |  |  |
| 69 | Načrtovanje mobilne aplikacije | 2015-03-16 → 2015-03-30 (+14d) | 2015-03-16 → 2015-03-31 (+15d) |  | none → 0d |  |  |
| 70 | Izdelava grafičnega vmesnika | 2015-03-16 → 2015-03-30 (+14d) | 2015-03-16 → 2015-03-31 (+15d) |  | none → 0d |  |  |
| 71 | Modeliranje podatkovne baze | 2015-03-16 → 2015-03-30 (+14d) | 2015-03-16 → 2015-03-31 (+15d) |  | none → 0d |  |  |
| 72 | Vzpostavitev lokalne podatkovne baze | 2015-03-16 → 2015-03-30 (+14d) | 2015-03-16 → 2015-03-31 (+15d) |  | none → 0d |  |  |
| 74 | Implementacija sprehoda v načinu 360° panorame | 2015-03-16 → 2015-03-30 (+14d) | 2015-03-16 → 2015-03-31 (+15d) |  | none → 0d |  |  |

| ID | Task | Start | Finish | Total float | Predecessors |
| --- | --- | --- | --- | --- | --- |
| 75 | Implementacija sprehoda v virtualni realnosti | 2015-03-16 → 2015-03-30 (+14d) | 2015-03-16 → 2015-03-31 (+15d) | none → 0d |  |
| 76 | Implementacija vnosa podatkov | 2015-03-16 → 2015-03-30 (+14d) | 2015-03-16 → 2015-03-31 (+15d) | none → 0d |  |
| 77 | Priprava dokumentacije | 2015-03-16 → 2015-03-30 (+14d) | 2015-03-16 → 2015-03-31 (+15d) | none → 0d |  |
| 78 | Predstavitev rezultatov iteracije naročniku | 2015-03-16 → 2015-03-30 (+14d) | 2015-03-16 → 2015-03-31 (+15d) | none → 0d |  |
| 79 | Ponovna iteracija implementacije | 2015-03-16 → 2015-03-30 (+14d) | 2015-03-16 → 2015-03-31 (+15d) | none → 0d |  |
| 80 | **Testiranje** | 2015-03-16 → 2015-03-30 (+14d) | 2015-03-16 → 2015-03-31 (+15d) |  | none → 29 |
| 81 | **Spletna aplikacija** | 2015-03-16 → 2015-03-30 (+14d) | 2015-03-16 → 2015-03-31 (+15d) |  |  |
| 82 | Priprava načrta | 2015-03-16 → 2015-03-30 (+14d) | 2015-03-16 → 2015-03-31 (+15d) | none → 0d |  |
| 83 | Priprava testnih primerov | 2015-03-16 → 2015-03-30 (+14d) | 2015-03-16 → 2015-03-31 (+15d) | none → 0d |  |
| 84 | Testiranje | 2015-03-16 → 2015-03-30 (+14d) | 2015-03-16 → 2015-03-31 (+15d) | none → 0d |  |
| 85 | Poročilo | 2015-03-16 → 2015-03-30 (+14d) | 2015-03-16 → 2015-03-31 (+15d) | none → 0d |  |
| 86 | Priprava dokumentacije | 2015-03-16 → 2015-03-30 (+14d) | 2015-03-16 → 2015-03-31 (+15d) | none → 0d |  |
| 87 | Ponovna iteracija implementacije | 2015-03-16 → 2015-03-30 (+14d) | 2015-03-16 → 2015-03-31 (+15d) | none → 0d |  |
| 88 | **Inteligentni sistem** | 2015-03-16 → 2015-03-30 (+14d) | 2015-03-16 → 2015-03-31 (+15d) |  |  |
| 89 | Priprava načrta | 2015-03-16 → 2015-03-30 (+14d) | 2015-03-16 → 2015-03-31 (+15d) | none → 0d |  |
| 90 | Priprava testnih primerov | 2015-03-16 → 2015-03-30 (+14d) | 2015-03-16 → 2015-03-31 (+15d) | none → 0d |  |
| 91 | Testiranje | 2015-03-16 → 2015-03-30 (+14d) | 2015-03-16 → 2015-03-31 (+15d) | none → 0d |  |
| 92 | Poročilo | 2015-03-16 → 2015-03-30 (+14d) | 2015-03-16 → 2015-03-31 (+15d) | none → 0d |  |
| 93 | Priprava dokumentacije | 2015-03-16 → 2015-03-30 (+14d) | 2015-03-16 → 2015-03-31 (+15d) | none → 0d |  |
| 94 | Ponovna iteracija implementacije | 2015-03-16 → 2015-03-30 (+14d) | 2015-03-16 → 2015-03-31 (+15d) | none → 0d |  |
| 95 | **Modifikacija brezpilotna zračna plovila** | 2015-03-16 → 2015-03-30 (+14d) | 2015-03-16 → 2015-03-31 (+15d) |  |  |
| 96 | Priprava načrta | 2015-03-16 → 2015-03-30 (+14d) | 2015-03-16 → 2015-03-31 (+15d) | none → 0d |  |
| 97 | Priprava testnih primerov | 2015-03-16 → 2015-03-30 (+14d) | 2015-03-16 → 2015-03-31 (+15d) | none → 0d |  |
| 98 | Testiranje | 2015-03-16 → 2015-03-30 (+14d) | 2015-03-16 → 2015-03-31 (+15d) | none → 0d |  |
| 99 | Poročilo | 2015-03-16 → 2015-03-30 (+14d) | 2015-03-16 → 2015-03-31 (+15d) | none → 0d |  |
| 100 | Priprava dokumentacije | 2015-03-16 → 2015-03-30 (+14d) | 2015-03-16 → 2015-03-31 (+15d) | none → 0d |  |
| 101 | Ponovna iteracija implementacije | 2015-03-16 → 2015-03-30 (+14d) | 2015-03-16 → 2015-03-31 (+15d) | none → 0d |  |
| 102 | **Mobilna aplikacija** | 2015-03-16 → 2015-03-30 (+14d) | 2015-03-16 → 2015-03-31 (+15d) |  |  |
| 103 | Priprava načrta | 2015-03-16 → 2015-03-30 (+14d) | 2015-03-16 → 2015-03-31 (+15d) | none → 0d |  |
| 104 | Priprava testnih primerov | 2015-03-16 → 2015-03-30 (+14d) | 2015-03-16 → 2015-03-31 (+15d) | none → 0d |  |
| 105 | Testiranje | 2015-03-16 → 2015-03-30 (+14d) | 2015-03-16 → 2015-03-31 (+15d) | none → 0d |  |
| 106 | Poročilo | 2015-03-16 → 2015-03-30 (+14d) | 2015-03-16 → 2015-03-31 (+15d) | none → 0d |  |
| 107 | Priprava dokumentacije | 2015-03-16 → 2015-03-30 (+14d) | 2015-03-16 → 2015-03-31 (+15d) | none → 0d |  |
| 108 | Ponovna iteracija implementacije | 2015-03-16 → 2015-03-30 (+14d) | 2015-03-16 → 2015-03-31 (+15d) | none → 0d |  |
| 109 | **Priprava navodil za uporabo** | 2015-03-16 → 2015-03-31 (+15d) | 2015-03-16 → 2015-04-01 (+16d) | none → 0d | none → 37, 80 |
| 115 | **Izobraževanje** | 2015-03-16 → 2015-04-01 (+16d) | 2015-03-16 → 2015-04-02 (+17d) | none → 0d | none → 109 |
| 120 | **Zaključek projekta** | 2015-03-16 → 2015-04-02 (+17d) | 2015-03-16 → 2015-04-03 (+18d) |  | none → 115 |
| 121 | **Namestitev pri naročniku** | 2015-03-16 → 2015-04-02 (+17d) | 2015-03-16 → 2015-04-03 (+18d) | none → 0d |  |
| 133 | Pogostitev izvajalcev | 2015-03-16 → 2015-04-02 (+17d) | 2015-03-16 → 2015-04-03 (+18d) | none → 0.75d |  |

## Version 5 (saved 2015-04-20)

Note of the change: Zadnja vaja

Last finish 2015-04-06 → 2015-12-15 (+253d).

Added:

| ID | Task | Duration | Start | Finish | Predecessors |
| --- | --- | --- | --- | --- | --- |
| 3 | Grobi projektni plan | 3d | 2015-03-16 | 2015-03-19 | 2 |

Changed:

| ID | Task | Start | Finish | Duration | Total float | Predecessors | Other |
| --- | --- | --- | --- | --- | --- | --- | --- |
| 4 | Priprava pogodbe | 2015-03-16 → 2015-03-19 (+3d) | 2015-03-17 → 2015-03-20 (+3d) |  |  | 2 → 3 |  |
| 5 | Podpis pogodbe | 2015-03-17 → 2015-03-20 (+3d) | 2015-03-17 → 2015-03-20 (+3d) |  |  |  |  |
| 6 | **Priprava zahtev** | 2015-03-17 → 2015-03-20 (+3d) | 2015-03-26 → 2015-03-31 (+5d) |  |  | 5 → none |  |
| 7 | Zajem zahtev | 2015-03-17 → 2015-03-20 (+3d) | 2015-03-19 → 2015-03-24 (+5d) |  |  | none → 5 |  |
| 8 | Analiza zahtev | 2015-03-19 → 2015-03-24 (+5d) | 2015-03-20 → 2015-03-25 (+5d) |  |  |  |  |
| 9 | Izdelava specifikacij | 2015-03-20 → 2015-03-25 (+5d) | 2015-03-25 → 2015-03-30 (+5d) |  |  |  |  |
| 10 | Sestanek s stranko, usklajevanje specifikacij | 2015-03-25 → 2015-03-30 (+5d) | 2015-03-26 → 2015-03-31 (+5d) |  |  |  |  |
| 11 | Potrditev zahtev | 2015-03-26 → 2015-03-31 (+5d) | 2015-03-26 → 2015-03-31 (+5d) |  |  |  |  |
| 12 | **Analiza nabavnega materiala** | 2015-03-26 → 2015-03-31 (+5d) | 2015-04-06 → 2015-04-09 (+3d) | 6.75d → 6.88d | 0d → 177.88d | 6 → none |  |
| 13 | Pridobivanje ponudb za senzorje in kamere | 2015-03-26 → 2015-03-31 (+5d) | 2015-04-01 → 2015-04-06 (+5d) |  | 0d → 177.88d | none → 6 |  |
| 14 | Nabava testnega materiala | 2015-04-01 → 2015-04-06 (+5d) | 2015-04-01 → 2015-04-06 (+5d) |  | 0d → 177.88d |  |  |
| 15 | Prevzem materiala | 2015-04-01 → 2015-04-06 (+5d) | 2015-04-01 → 2015-04-06 (+5d) |  | 0d → 177.88d |  |  |
| 16 | Preizkušanje testnega materiala | 2015-04-01 → 2015-04-06 (+5d) | 2015-04-03 → 2015-04-08 (+5d) |  | 0d → 177.88d |  | resources none → Elektronik 1; Mehatronik 1; Vodja delovne skupine - BZP |
| 17 | Dokumentiranje preizkušanja testnega materiala | 2015-04-03 → 2015-04-08 (+5d) | 2015-04-06 → 2015-04-09 (+3d) |  | 0d → 177.88d |  | resources none → Elektronik 1; Mehatronik 1; Vodja delovne skupine - BZP |
| 18 | Nabava materiala | 2015-04-06 → 2015-04-09 (+3d) | 2015-04-06 → 2015-04-09 (+3d) | 1h → 2h | 0d → 177.88d |  | resources none → Vodja delovne skupine - BZP; 360° kamera [1400%]; Brezpilotno zračno plovilo [1000%]; Daljinski upravljalnik [1000%]; Paket senzorjev [1000%]; Tehnični material [1400%]; Delovna postaja [600%]; Pisarniški material; Strežnik [300%] |
| 19 | **Priprava delovnega okolja** | 2015-03-26 → 2015-03-31 (+5d) | 2015-03-27 → 2015-04-07 (+11d) | 1d? → 4.75d |  | 6 → none |  |
| 20 | Namestitev strežnika | 2015-03-26 → 2015-03-31 (+5d) | 2015-03-27 → 2015-03-31 (+4d) | 1d? → 2h |  | none → 6 | resources none → Vzdrževalec |
| 21 | Konfiguracija strežnika | 2015-03-26 → 2015-03-31 (+5d) | 2015-03-27 → 2015-04-01 (+5d) | 1d? → 4h |  | none → 20 | resources none → Vzdrževalec |
| 22 | Vzpostavitev RAID 6 diskovnega polja | 2015-03-26 → 2015-04-01 (+6d) | 2015-03-27 → 2015-04-02 (+6d) | 1d? → 1d |  | none → 21 | resources none → Vzdrževalec |
| 23 | Priprava "delavnice" za brezpilotna zračna plovila | 2015-03-26 → 2015-04-02 (+7d) | 2015-03-27 → 2015-04-03 (+7d) | 1d? → 1d |  | none → 22 | resources none → Elektronik 2; Mehatronik 2 |
| 24 | Namestitev delovnih postaj | 2015-03-26 → 2015-04-03 (+8d) | 2015-03-27 → 2015-04-06 (+10d) | 1d? → 1d |  | none → 23 | resources none → Vzdrževalec |
| 25 | Priprava poročila o pripravi delovnega okolja | 2015-03-26 → 2015-04-06 (+11d) | 2015-03-27 → 2015-04-07 (+11d) | 1d? → 1d |  | none → 24 | resources none → Vzdrževalec; Elektronik 2; Mehatronik 2 |
| 26 | **Vzpostavitev redudančnega delovnega okolja** | 2015-03-26 → 2015-04-07 (+12d) | 2015-03-27 → 2015-04-09 (+13d) | 1d? → 2.25d |  | 6 → none |  |
| 27 | Analiza zahtev redundančnega delovnega okolja | 2015-03-26 → 2015-04-07 (+12d) | 2015-03-27 → 2015-04-08 (+12d) | 1d? → 1d |  | none → 19 | resources none → Načrtovalec sistema; Oblikovalec podatkovne baze |
| 28 | Implementacija redundančnega delovnega okolja | 2015-03-26 → 2015-04-08 (+13d) | 2015-03-27 → 2015-04-09 (+13d) | 1d? → 1d |  | none → 27 | resources none → Oblikovalec podatkovne baze; Vzdrževalec |
| 29 | Priprava poročila | 2015-03-26 → 2015-04-09 (+14d) | 2015-03-27 → 2015-04-09 (+13d) | 1d? → 2h |  | none → 28 | resources none → Načrtovalec sistema; Oblikovalec podatkovne baze; Vzdrževalec |
| 30 | **Vzpostavitev podatkovne baze** | 2015-03-27 → 2015-04-09 (+13d) | 2015-03-30 → 2015-04-17 (+18d) | 1d? → 5.62d |  | 26, 19 → none |  |
| 31 | Analiza zahtev | 2015-03-27 → 2015-04-09 (+13d) | 2015-03-30 → 2015-04-10 (+11d) | 1d? → 1d |  | none → 26, 19 | resources none → Načrtovalec sistema; Oblikovalec podatkovne baze; Vzdrževalec |
| 32 | Izdelava ER diagrama | 2015-03-27 → 2015-04-10 (+14d) | 2015-03-30 → 2015-04-13 (+14d) | 1d? → 1d |  | none → 31 | resources none → Oblikovalec podatkovne baze |
| 33 | Modeliranje podatkovne baze | 2015-03-27 → 2015-04-13 (+17d) | 2015-03-30 → 2015-04-13 (+14d) | 1d? → 4h |  | none → 32 | resources none → Oblikovalec podatkovne baze |
| 34 | Vzpostavitev podatkovnega strežnika | 2015-03-27 → 2015-04-14 (+18d) | 2015-03-30 → 2015-04-14 (+15d) | 1d? → 4h |  | none → 33 | resources none → Oblikovalec podatkovne baze; Vzdrževalec |
| 35 | Implementacija podatkovne baze | 2015-03-27 → 2015-04-14 (+18d) | 2015-03-30 → 2015-04-15 (+16d) | 1d? → 1d |  | none → 34 | resources none → Oblikovalec podatkovne baze |
| 36 | Priprava politike arhiviranja in obnovitve podatkovne baze | 2015-03-27 → 2015-04-15 (+19d) | 2015-03-30 → 2015-04-16 (+17d) | 1d? → 1d |  | none → 35 | resources none → Načrtovalec sistema; Oblikovalec podatkovne baze; Vodja delovne skupine - intelegentni s.; Vodja delovne skupine - mobilna a.; Vodja delovne skupine - spletna a.; Vodja projekta |
| 37 | Priprava poročila | 2015-03-27 → 2015-04-16 (+20d) | 2015-03-30 → 2015-04-17 (+18d) | 1d? → 5h |  | none → 36 | resources none → Oblikovalec podatkovne baze |
| 38 | **Razvoj** | 2015-03-30 → 2015-04-17 (+18d) | 2015-03-31 → 2015-10-14 (+197d) | 1d? → 128.12d |  | 30 → none |  |
| 39 | **Sestanek delovne skupine** | 2015-03-30 → 2015-04-17 (+18d) | 2015-03-30 → 2015-04-17 (+18d) | 0.25d → 0.12d | 0.75d → 128d |  |  |
| 40 | Sestanek delovne skupine | 2015-03-30 → 2015-04-17 (+18d) | 2015-03-30 → 2015-04-17 (+18d) | 2h → 1h | 0.75d → 128d | none → 30 | resources none → Elektronik 1; Grafični oblikovalec 1; Mehatronik 1; Vodja delovne skupine - spletna a.; Načrtovalec 1; Vodja delovne skupine - mobilna a.; Programer 1; Vodja projekta; Vodja delovne skupine - BZP; Vodja delovne skupine - intelegentni s.; Tester 2; Tester 1 |
| 41 | **Inteligentni sistem** | 2015-03-30 → 2015-04-17 (+18d) | 2015-03-31 → 2015-10-14 (+197d) | 1d? → 128.12d |  |  |  |
| 42 | Načrtovanje inteligentnega sistema | 2015-03-30 → 2015-04-17 (+18d) | 2015-03-31 → 2015-04-22 (+22d) | 1d? → 3d |  | none → 30 | resources none → Načrtovalec sistema; Oblikovalec podatkovne baze; Vodja delovne skupine - intelegentni s. |
| 43 | Implementacija podatkovne baze | 2015-03-30 → 2015-04-22 (+23d) | 2015-03-31 → 2015-04-22 (+22d) | 1d? → 1h |  | none → 42 | resources none → Oblikovalec podatkovne baze |
| 44 | Razvoj storitev za dostop in vnos podatkov | 2015-03-30 → 2015-04-22 (+23d) | 2015-03-31 → 2015-05-21 (+51d) | 1d? → 21d |  | none → 43 | resources none → Programer 1; Programer 2; Programer 3; Programer 4 |
| 45 | Implementacija storitev za zajem podatkov (vreme) | 2015-03-30 → 2015-05-21 (+52d) | 2015-03-31 → 2015-06-19 (+80d) | 1d? → 21d |  | none → 44 | resources none → Programer 1; Programer 2; Programer 3; Programer 4 |
| 46 | Razvoj mehanizmov za varovanje podatkov | 2015-03-30 → 2015-06-19 (+81d) | 2015-03-31 → 2015-07-20 (+111d) | 1d? → 21d |  | none → 45 | resources none → Programer 1; Programer 2; Programer 3; Programer 4 |
| 47 | Razvoj nadzora brezpilotnih zračnih plovil | 2015-03-30 → 2015-07-20 (+112d) | 2015-03-31 → 2015-09-14 (+167d) | 1d? → 40d |  | none → 46 | resources none → Programer 1; Programer 2; Programer 3; Programer 4 |
| 48 | Priprava dokumentacije | 2015-03-30 → 2015-09-14 (+168d) | 2015-03-31 → 2015-09-23 (+176d) | 1d? → 7d |  | none → 47 | resources none → Programer 1; Vodja delovne skupine - intelegentni s. |
| 49 | Predstavitev rezultatov iteracije naročniku | 2015-03-30 → 2015-09-23 (+177d) | 2015-03-31 → 2015-09-24 (+177d) | 1d? → 1d |  | none → 48 | resources none → Vodja delovne skupine - intelegentni s. |
| 50 | Ponovna iteracija implementacije | 2015-03-30 → 2015-09-24 (+178d) | 2015-03-31 → 2015-10-14 (+197d) | 1d? → 14d |  | none → 49 | resources none → Programer 1; Programer 2; Programer 3; Programer 4; Vodja delovne skupine - intelegentni s. |
| 51 | **Modifikacija brezpilotna zračna plovila** | 2015-03-30 → 2015-04-17 (+18d) | 2015-03-31 → 2015-10-14 (+197d) | 1d? → 128d | 0d → 0.12d |  |  |
| 52 | Načrtovanje modifikacije brezpilotnega zračnega plovila | 2015-03-30 → 2015-04-17 (+18d) | 2015-03-31 → 2015-04-22 (+22d) | 1d? → 3d | 0d → 0.12d | none → 30 | resources none → Elektronik 1; Mehatronik 1; Vodja delovne skupine - BZP; Načrtovalec 1 |
| 53 | Priprava senzorjev in kamere | 2015-03-30 → 2015-04-22 (+23d) | 2015-03-31 → 2015-04-29 (+29d) | 1d? → 5d | 0d → 0.12d | none → 52 | resources none → Elektronik 1; Mehatronik 1 |
| 54 | Povezava senzorjev in kamere z inteligentnim sistemom | 2015-03-30 → 2015-04-29 (+30d) | 2015-03-31 → 2015-06-02 (+63d) | 1d? → 24d | 0d → 0.12d | none → 53 | resources none → Elektronik 1; Elektronik 2; Mehatronik 1; Mehatronik 2 |
| 55 | Implementacija modifikacij | 2015-03-30 → 2015-06-02 (+64d) | 2015-03-31 → 2015-07-06 (+97d) | 1d? → 24d | 0d → 0.12d | none → 54 | resources none → Elektronik 1; Elektronik 2; Mehatronik 1; Mehatronik 2 |
| 56 | Razvoj samodejnega upravljanja letenja | 2015-03-30 → 2015-07-06 (+98d) | 2015-03-31 → 2015-09-14 (+167d) | 1d? → 50d | 0d → 0.12d | none → 55 | resources none → Elektronik 1; Elektronik 2; Mehatronik 1; Mehatronik 2 |
| 57 | Priprava dokumentacije | 2015-03-30 → 2015-09-14 (+168d) | 2015-03-31 → 2015-09-23 (+176d) | 1d? → 7d | 0d → 0.12d | none → 56 | resources none → Načrtovalec 1; Vodja delovne skupine - BZP |
| 58 | Predstavitev rezultatov iteracije naročniku | 2015-03-30 → 2015-09-23 (+177d) | 2015-03-31 → 2015-09-24 (+177d) | 1d? → 1d | 0d → 0.12d | none → 57 | resources none → Vodja delovne skupine - BZP |
| 59 | Ponovna iteracija implementacije | 2015-03-30 → 2015-09-24 (+178d) | 2015-03-31 → 2015-10-14 (+197d) | 1d? → 14d | 0d → 0.12d | none → 58 | resources none → Elektronik 1; Elektronik 2; Mehatronik 1; Mehatronik 2; Vodja delovne skupine - BZP |
| 60 | **Spletna aplikacija** | 2015-03-30 → 2015-04-17 (+18d) | 2015-03-31 → 2015-09-18 (+171d) | 1d? → 110d | 0d → 18.12d |  |  |
| 61 | Načrtovanje spletne aplikacije | 2015-03-30 → 2015-04-17 (+18d) | 2015-03-31 → 2015-04-22 (+22d) | 1d? → 3d | 0d → 18.12d | none → 30 | resources none → Načrtovalec 2; Vodja delovne skupine - spletna a. |
| 62 | Izdelava grafične predloge | 2015-03-30 → 2015-04-22 (+23d) | 2015-03-31 → 2015-04-27 (+27d) | 1d? → 3d | 0d → 18.12d | none → 61 | resources none → Grafični oblikovalec 1; Grafični oblikovalec 2 |
| 63 | Implementacije grafičnega vmesnika | 2015-03-30 → 2015-04-27 (+28d) | 2015-03-31 → 2015-05-05 (+35d) | 1d? → 6d | 0d → 18.12d | none → 62 | resources none → Grafični oblikovalec 1; Grafični oblikovalec 2 |
| 64 | Implementacija sprehoda v virtualni realnosti | 2015-03-30 → 2015-05-05 (+36d) | 2015-03-31 → 2015-06-26 (+87d) | 1d? → 38d | 0d → 18.12d | none → 63 | resources none → Programer 5; Programer 6; Programer 7; Vodja delovne skupine - spletna a. |
| 65 | Implementacija sprehoda v načinu 360° panorame | 2015-03-30 → 2015-06-26 (+88d) | 2015-03-31 → 2015-08-19 (+141d) | 1d? → 38d | 0d → 18.12d | none → 64 | resources none → Programer 5; Programer 6; Programer 7; Vodja delovne skupine - spletna a. |
| 66 | Priprava dokumentacije | 2015-03-30 → 2015-08-19 (+142d) | 2015-03-31 → 2015-08-28 (+150d) | 1d? → 7d | 0d → 18.12d | none → 65 | resources none → Grafični oblikovalec 1; Programer 5; Vodja delovne skupine - spletna a. |
| 67 | Predstavitev rezultatov iteracije naročniku | 2015-03-30 → 2015-08-28 (+151d) | 2015-03-31 → 2015-08-31 (+153d) | 1d? → 1d | 0d → 18.12d | none → 66 | resources none → Vodja delovne skupine - spletna a. |
| 68 | Ponovna iteracija implementacije | 2015-03-30 → 2015-08-31 (+154d) | 2015-03-31 → 2015-09-18 (+171d) | 1d? → 14d | 0d → 18.12d | none → 67 | resources none → Grafični oblikovalec 1; Grafični oblikovalec 2; Programer 5; Programer 6; Programer 7; Vodja delovne skupine - spletna a. |
| 69 | **Mobilna aplikacija** | 2015-03-30 → 2015-04-17 (+18d) | 2015-03-31 → 2015-09-29 (+182d) | 1d? → 117d | 0d → 11.12d |  |  |
| 70 | Načrtovanje mobilne aplikacije | 2015-03-30 → 2015-04-17 (+18d) | 2015-03-31 → 2015-04-22 (+22d) | 1d? → 3d | 0d → 11.12d | none → 30 | resources none → Načrtovalec 3; Vodja delovne skupine - mobilna a. |
| 71 | Izdelava grafičnega vmesnika | 2015-03-30 → 2015-04-22 (+23d) | 2015-03-31 → 2015-04-29 (+29d) | 1d? → 5d | 0d → 11.12d | none → 70 | resources none → Grafični oblikovalec 3 |
| 72 | Modeliranje podatkovne baze | 2015-03-30 → 2015-04-29 (+30d) | 2015-03-31 → 2015-05-01 (+31d) | 1d? → 2d | 0d → 11.12d | none → 71 | resources none → Oblikovalec podatkovne baze |
| 73 | Vzpostavitev lokalne podatkovne baze | 2015-03-30 → 2015-05-01 (+32d) | 2015-03-31 → 2015-05-04 (+34d) | 1d? → 1d | 0d → 11.12d | none → 72 | resources none → Oblikovalec podatkovne baze |

| ID | Task | Start | Finish | Duration | Total float | Predecessors | Other |
| --- | --- | --- | --- | --- | --- | --- | --- |
| 74 | Implementacija grafične vmesnika | 2015-03-30 → 2015-05-04 (+35d) | 2015-03-31 → 2015-05-12 (+42d) | 1d? → 6d | 0d → 11.12d | none → 73 | resources none → Grafični oblikovalec 3 |
| 75 | Implementacija sprehoda v načinu 360° panorame | 2015-03-30 → 2015-05-12 (+43d) | 2015-03-31 → 2015-06-24 (+85d) | 1d? → 31d | 0d → 11.12d | none → 74 | resources none → Programer 8; Programer 9; Programer 10 |
| 76 | Implementacija sprehoda v virtualni realnosti | 2015-03-30 → 2015-06-24 (+86d) | 2015-03-31 → 2015-08-06 (+128d) | 1d? → 31d | 0d → 11.12d | none → 75 | resources none → Programer 8; Programer 9; Programer 10 |
| 77 | Implementacija vnosa podatkov | 2015-03-30 → 2015-08-06 (+129d) | 2015-03-31 → 2015-08-28 (+150d) | 1d? → 16d | 0d → 11.12d | none → 76 | resources none → Programer 8; Programer 9; Programer 10 |
| 78 | Priprava dokumentacije | 2015-03-30 → 2015-08-28 (+151d) | 2015-03-31 → 2015-09-08 (+161d) | 1d? → 7d | 0d → 11.12d | none → 77 | resources none → Načrtovalec 3; Programer 8; Vodja delovne skupine - mobilna a. |
| 79 | Predstavitev rezultatov iteracije naročniku | 2015-03-30 → 2015-09-08 (+162d) | 2015-03-31 → 2015-09-09 (+162d) | 1d? → 1d | 0d → 11.12d | none → 78 | resources none → Vodja delovne skupine - mobilna a. |
| 80 | Ponovna iteracija implementacije | 2015-03-30 → 2015-09-09 (+163d) | 2015-03-31 → 2015-09-29 (+182d) | 1d? → 14d | 0d → 11.12d | none → 79 | resources none → Grafični oblikovalec 3; Načrtovalec 3; Programer 8; Programer 9; Programer 10; Vodja delovne skupine - mobilna a.; Vodja projekta |
| 81 | **Testiranje** | 2015-03-30 → 2015-10-14 (+198d) | 2015-03-31 → 2015-11-25 (+239d) | 1d? → 30d |  | 30 → none |  |
| 82 | **Spletna aplikacija** | 2015-03-30 → 2015-10-14 (+198d) | 2015-03-31 → 2015-11-19 (+233d) | 1d? → 26d | 0d → 4d |  |  |
| 83 | Priprava načrta | 2015-03-30 → 2015-10-14 (+198d) | 2015-03-31 → 2015-10-19 (+202d) | 1d? → 3d | 0d → 4d | none → 38 | resources none → Tester 1 |
| 84 | Priprava testnih primerov | 2015-03-30 → 2015-10-19 (+203d) | 2015-03-31 → 2015-10-21 (+204d) | 1d? → 2d | 0d → 4d | none → 83 | resources none → Tester 2 |
| 85 | Testiranje | 2015-03-30 → 2015-10-21 (+205d) | 2015-03-31 → 2015-11-09 (+223d) | 1d? → 13d | 0d → 4d | none → 84 | resources none → Tester 1; Tester 2 |
| 86 | Poročilo | 2015-03-30 → 2015-11-09 (+224d) | 2015-03-31 → 2015-11-10 (+224d) | 1d? → 1d | 0d → 4d | none → 85 | resources none → Tester 1 |
| 87 | Priprava dokumentacije | 2015-03-30 → 2015-11-10 (+225d) | 2015-03-31 → 2015-11-12 (+226d) | 1d? → 2d | 0d → 4d | none → 86 | resources none → Tester 2 |
| 88 | Ponovna iteracija implementacije | 2015-03-30 → 2015-11-12 (+227d) | 2015-03-31 → 2015-11-19 (+233d) | 1d? → 5d | 0d → 4d | none → 87 | resources none → Tester 1; Tester 2 |
| 89 | **Inteligentni sistem** | 2015-03-30 → 2015-10-14 (+198d) | 2015-03-31 → 2015-11-25 (+239d) | 1d? → 30d |  |  |  |
| 90 | Priprava načrta | 2015-03-30 → 2015-10-14 (+198d) | 2015-03-31 → 2015-10-19 (+202d) | 1d? → 3d |  | none → 38 | resources none → Tester 3 |
| 91 | Priprava testnih primerov | 2015-03-30 → 2015-10-19 (+203d) | 2015-03-31 → 2015-10-21 (+204d) | 1d? → 2d |  | none → 90 | resources none → Tester 4 |
| 92 | Testiranje | 2015-03-30 → 2015-10-21 (+205d) | 2015-03-31 → 2015-11-11 (+225d) | 1d? → 15d |  | none → 91 | resources none → Tester 3; Tester 4 |
| 93 | Poročilo | 2015-03-30 → 2015-11-11 (+226d) | 2015-03-31 → 2015-11-12 (+226d) | 1d? → 1d |  | none → 92 | resources none → Tester 3 |
| 94 | Priprava dokumentacije | 2015-03-30 → 2015-11-12 (+227d) | 2015-03-31 → 2015-11-16 (+230d) | 1d? → 2d |  | none → 93 | resources none → Tester 4 |
| 95 | Ponovna iteracija implementacije | 2015-03-30 → 2015-11-16 (+231d) | 2015-03-31 → 2015-11-25 (+239d) | 1d? → 7d |  | none → 94 | resources none → Tester 3; Tester 4 |
| 96 | **Modifikacija brezpilotna zračna plovila** | 2015-03-30 → 2015-10-14 (+198d) | 2015-03-31 → 2015-11-13 (+227d) | 1d? → 22d | 0d → 8d |  |  |
| 97 | Priprava načrta | 2015-03-30 → 2015-10-14 (+198d) | 2015-03-31 → 2015-10-19 (+202d) | 1d? → 3d | 0d → 8d | none → 38 | resources none → Tester BZP 1 |
| 98 | Priprava testnih primerov | 2015-03-30 → 2015-10-19 (+203d) | 2015-03-31 → 2015-10-20 (+203d) | 1d? → 1d | 0d → 8d | none → 97 | resources none → Tester BZP 2 |
| 99 | Testiranje | 2015-03-30 → 2015-10-20 (+204d) | 2015-03-31 → 2015-11-02 (+216d) | 1d? → 9d | 0d → 8d | none → 98 | resources none → Tester BZP 1; Tester BZP 2 |
| 100 | Poročilo | 2015-03-30 → 2015-11-02 (+217d) | 2015-03-31 → 2015-11-03 (+217d) | 1d? → 1d | 0d → 8d | none → 99 | resources none → Tester BZP 1 |
| 101 | Priprava dokumentacije | 2015-03-30 → 2015-11-03 (+218d) | 2015-03-31 → 2015-11-05 (+219d) | 1d? → 2d | 0d → 8d | none → 100 | resources none → Tester BZP 2 |
| 102 | Ponovna iteracija implementacije | 2015-03-30 → 2015-11-05 (+220d) | 2015-03-31 → 2015-11-13 (+227d) | 1d? → 6d | 0d → 8d | none → 101 | resources none → Tester BZP 1; Tester BZP 2 |
| 103 | **Mobilna aplikacija** | 2015-03-30 → 2015-10-14 (+198d) | 2015-03-31 → 2015-11-17 (+231d) | 1d? → 24d | 0d → 6d |  |  |
| 104 | Priprava načrta | 2015-03-30 → 2015-10-14 (+198d) | 2015-03-31 → 2015-10-19 (+202d) | 1d? → 3d | 0d → 6d | none → 38 | resources none → Tester 5 |
| 105 | Priprava testnih primerov | 2015-03-30 → 2015-10-19 (+203d) | 2015-03-31 → 2015-10-22 (+205d) | 1d? → 3d | 0d → 6d | none → 104 | resources none → Tester 6 |
| 106 | Testiranje | 2015-03-30 → 2015-10-22 (+206d) | 2015-03-31 → 2015-11-05 (+219d) | 1d? → 10d | 0d → 6d | none → 105 | resources none → Tester 5; Tester 6 |
| 107 | Poročilo | 2015-03-30 → 2015-11-05 (+220d) | 2015-03-31 → 2015-11-06 (+220d) | 1d? → 1d | 0d → 6d | none → 106 | resources none → Tester 5 |
| 108 | Priprava dokumentacije | 2015-03-30 → 2015-11-06 (+221d) | 2015-03-31 → 2015-11-10 (+224d) | 1d? → 2d | 0d → 6d | none → 107 | resources none → Tester 6 |
| 109 | Ponovna iteracija implementacije | 2015-03-30 → 2015-11-10 (+225d) | 2015-03-31 → 2015-11-17 (+231d) | 1d? → 5d | 0d → 6d | none → 108 | resources none → Tester 5; Tester 6 |
| 110 | **Priprava navodil za uporabo** | 2015-03-31 → 2015-11-25 (+239d) | 2015-04-01 → 2015-12-01 (+244d) | 1d? → 4d |  | 38, 81 → none |  |
| 111 | Priprava navodil za uporabo spletne aplikacije | 2015-03-31 → 2015-11-25 (+239d) | 2015-04-01 → 2015-11-30 (+243d) | 1d? → 3d | 0d → 1d | none → 38, 81 | resources none → Vodja delovne skupine - spletna a.; Načrtovalec 2 |
| 112 | Priprava navodil za uporabo mobilne aplikacije | 2015-03-31 → 2015-11-25 (+239d) | 2015-04-01 → 2015-11-30 (+243d) | 1d? → 3d | 0d → 1d | none → 38, 81 | resources none → Vodja delovne skupine - mobilna a.; Načrtovalec 3 |
| 113 | Priprava navodil za uporabo brezpilotnih zračnih plovil | 2015-03-31 → 2015-11-25 (+239d) | 2015-04-01 → 2015-11-30 (+243d) | 1d? → 3d | 0d → 1d | none → 38, 81 | resources none → Načrtovalec 1; Vodja delovne skupine - BZP |
| 114 | Priprava navodila za vzdrževaje brezpilotnih zračnih plovil | 2015-03-31 → 2015-11-25 (+239d) | 2015-04-01 → 2015-12-01 (+244d) | 1d? → 4d |  | none → 38, 81 | resources none → Mehatronik 2; Elektronik 2; Elektronik 1; Mehatronik 1 |
| 115 | Priprava navil za vzdrževanje intelegentnega sistema | 2015-03-31 → 2015-11-25 (+239d) | 2015-04-01 → 2015-12-01 (+244d) | 1d? → 4d |  | none → 38, 81 | resources none → Načrtovalec sistema; Oblikovalec podatkovne baze; Vodja delovne skupine - intelegentni s. |
| 116 | **Izobraževanje** | 2015-04-01 → 2015-12-01 (+244d) | 2015-04-02 → 2015-12-08 (+250d) | 1d? → 5d |  | 110 → none |  |
| 117 | Izboraževanje upravljanje intelegentnega sistema | 2015-04-01 → 2015-12-01 (+244d) | 2015-04-02 → 2015-12-08 (+250d) | 1d? → 5d |  | none → 110 | resources none → Načrtovalec sistema |
| 118 | Izobraževanje uporabe in vzdrževanja brezpilotnih zračnih polovil | 2015-04-01 → 2015-12-01 (+244d) | 2015-04-02 → 2015-12-08 (+250d) | 1d? → 5d |  | none → 110 | resources none → Vodja delovne skupine - BZP |
| 119 | Izobraževanje uporabe mobilne aplikacije | 2015-04-01 → 2015-12-01 (+244d) | 2015-04-02 → 2015-12-02 (+244d) | 1d? → 1d | 0d → 4d | none → 110 | resources none → Vodja delovne skupine - mobilna a. |
| 120 | Izobraževanje uporabe spletne aplikacije | 2015-04-01 → 2015-12-01 (+244d) | 2015-04-02 → 2015-12-03 (+245d) | 1d? → 2d | 0d → 3d | none → 110 | resources none → Vodja delovne skupine - spletna a. |
| 121 | **Zaključek projekta** | 2015-04-02 → 2015-12-08 (+250d) | 2015-04-03 → 2015-12-14 (+255d) | 1d? → 4d |  | 116 → none |  |
| 122 | **Namestitev pri naročniku** | 2015-04-02 → 2015-12-08 (+250d) | 2015-04-03 → 2015-12-14 (+255d) | 1d? → 4d |  |  |  |
| 123 | Priprava načrta namestitve | 2015-04-02 → 2015-12-08 (+250d) | 2015-04-03 → 2015-12-09 (+250d) | 1d? → 1d | none → 0d | none → 116 | resources none → Načrtovalec sistema; Oblikovalec podatkovne baze; Vodja projekta |
| 124 | Priprava in namestitev strežniških sistemov | 2015-04-02 → 2015-12-09 (+251d) | 2015-04-03 → 2015-12-10 (+251d) | 1d? → 1d | none → 0d | none → 123 | resources none → Načrtovalec sistema; Oblikovalec podatkovne baze; Vzdrževalec |
| 125 | Namestitev podatkovne baze | 2015-04-02 → 2015-12-10 (+252d) | 2015-04-03 → 2015-12-11 (+252d) | 1d? → 1d | none → 0d | none → 124 | resources none → Oblikovalec podatkovne baze |
| 126 | Vnos podatkov v podatkovno bazo | 2015-04-02 → 2015-12-11 (+253d) | 2015-04-03 → 2015-12-14 (+255d) | 1d? → 1d | none → 0d | none → 125 | resources none → Oblikovalec podatkovne baze |
| 127 | Namestitev intelegentega sistema | 2015-04-02 → 2015-12-08 (+250d) | 2015-04-03 → 2015-12-09 (+250d) | 1d? → 1d | none → 1d | none → 116 | resources none → Vodja delovne skupine - intelegentni s. |
| 128 | Preizkus delovanja intelegentnega sistema | 2015-04-02 → 2015-12-09 (+251d) | 2015-04-03 → 2015-12-10 (+251d) | 1d? → 1d | none → 1d | none → 127 | resources none → Tester 5; Tester 6; Vodja delovne skupine - intelegentni s. |
| 129 | Namestitev mobilne aplikacije | 2015-04-02 → 2015-12-08 (+250d) | 2015-04-03 → 2015-12-09 (+250d) | 1d? → 1d | none → 3d | none → 116 | resources none → Vodja delovne skupine - mobilna a. |
| 130 | Namestitev spletne aplikacije | 2015-04-02 → 2015-12-08 (+250d) | 2015-04-03 → 2015-12-09 (+250d) | 1d? → 1d | none → 3d | none → 116 | resources none → Vodja delovne skupine - spletna a. |
| 131 | Preizkus delovanja spletne in mobilne aplikacije | 2015-04-02 → 2015-12-08 (+250d) | 2015-04-03 → 2015-12-09 (+250d) | 1d? → 1d | none → 3d | none → 116 | resources none → Tester 1; Tester 2; Tester 3; Tester 4 |
| 132 | Namestitev brezpilotnih zračnih plovil | 2015-04-02 → 2015-12-08 (+250d) | 2015-04-03 → 2015-12-09 (+250d) | 1d? → 1d | none → 3d | none → 116 | resources none → Vodja delovne skupine - BZP |
| 133 | Preizkus delovanja brezpilotnih zračnih plovil | 2015-04-02 → 2015-12-10 (+252d) | 2015-04-03 → 2015-12-11 (+252d) | 1d? → 1d | none → 1d | none → 128 | resources none → Elektronik 1; Mehatronik 1; Vodja delovne skupine - intelegentni s. |
| 134 | Pogostitev izvajalcev | 2015-04-02 → 2015-12-14 (+256d) | 2015-04-03 → 2015-12-15 (+256d) | 1d? → 1d | 0.75d → 0d | none → 121 | resources none → Zakuska |
